# Diagrama de Gantt

How a schedule from MS Project changed from version to version. A marks actual dates.

## Version 1 (saved 2024-10-22)

Note of the change: 22/10/2024 Subiendo archivos

| ID | WBS | Task | Duration | Start | Finish | Predecessors | Total float |
| --- | --- | --- | --- | --- | --- | --- | --- |
| 1 | 1 | **Sistema de Compra y Venta** | 40.1d | 2024-10-23 09:00 | 2024-12-18 09:48 |  |  |
| 2 | 1.1 | **Modelo** | 6.7d | 2024-10-23 09:00 | 2024-10-31 16:36 |  | 1.5d |
| 3 | 1.1.1 | **Usuario** | 1d | 2024-10-23 09:00 | 2024-10-23 19:00 |  | 1.5d |
| 4 |  | Login | 0.2d | 2024-10-23 09:00 | 2024-10-23 10:36 |  | 1.5d |
| 5 |  | Cambio de contraseña | 0.3d | 2024-10-23 10:36 | 2024-10-23 13:00 | 4 | 1.5d |
| 6 |  | CRUD | 0.5d | 2024-10-23 15:00 | 2024-10-23 19:00 | 5 | 1.5d |
| 7 | 1.1.2 | **Categoria** | 0.5d | 2024-10-24 09:00 | 2024-10-24 13:00 |  | 1.5d |
| 8 |  | CRUD | 0.5d | 2024-10-24 09:00 | 2024-10-24 13:00 | 6 | 1.5d |
| 9 | 1.1.3 | **Producto** | 0.5d | 2024-10-24 15:00 | 2024-10-24 19:00 |  | 1.5d |
| 10 |  | CRUD | 0.5d | 2024-10-24 15:00 | 2024-10-24 19:00 | 8 | 1.5d |
| 11 | 1.1.4 | **Moneda** | 0.5d | 2024-10-25 09:00 | 2024-10-25 13:00 |  | 1.5d |
| 12 |  | CRUD | 0.5d | 2024-10-25 09:00 | 2024-10-25 13:00 | 10 | 1.5d |
| 13 | 1.1.5 | **Unidad de medida** | 0.5d | 2024-10-25 15:00 | 2024-10-25 19:00 |  | 1.5d |
| 14 |  | CRUD | 0.5d | 2024-10-25 15:00 | 2024-10-25 19:00 | 12 | 1.5d |
| 15 | 1.1.6 | **Cliente** | 0.5d | 2024-10-28 09:00 | 2024-10-28 13:00 |  | 1.5d |
| 16 |  | CRUD | 0.5d | 2024-10-28 09:00 | 2024-10-28 13:00 | 14 | 1.5d |
| 17 | 1.1.7 | **Proveedor** | 0.5d | 2024-10-28 15:00 | 2024-10-28 19:00 |  | 1.5d |
| 18 |  | CRUD | 0.5d | 2024-10-28 15:00 | 2024-10-28 19:00 | 16 | 1.5d |
| 19 | 1.1.8 | **Empresa** | 0.2d | 2024-10-29 09:00 | 2024-10-29 10:36 |  | 1.5d |
| 20 |  | CRUD | 0.2d | 2024-10-29 09:00 | 2024-10-29 10:36 | 18 | 1.5d |
| 21 | 1.1.9 | **Sucursal** | 0.2d | 2024-10-29 10:36 | 2024-10-29 12:12 |  | 1.5d |
| 22 |  | CRUD | 0.2d | 2024-10-29 10:36 | 2024-10-29 12:12 | 20 | 1.5d |
| 23 | 1.1.10 | **Compra** | 1d | 2024-10-29 12:12 | 2024-10-30 12:12 |  | 1.5d |
| 24 |  | CRUD | 0.2d | 2024-10-29 12:12 | 2024-10-29 15:48 | 22 | 1.5d |
| 25 |  | Agregar Producto | 0.3d | 2024-10-29 15:48 | 2024-10-29 18:12 | 24 | 1.5d |
| 26 |  | Listar Detalle de Compra | 0.5d | 2024-10-29 18:12 | 2024-10-30 12:12 | 25 | 1.5d |
| 27 | 1.1.11 | **Venta** | 1d | 2024-10-30 12:12 | 2024-10-31 12:12 |  | 1.5d |
| 28 |  | CRUD | 0.2d | 2024-10-30 12:12 | 2024-10-30 15:48 | 26 | 1.5d |
| 29 |  | Descontar Producto | 0.3d | 2024-10-30 15:48 | 2024-10-30 18:12 | 28 | 1.5d |
| 30 |  | Listar Detalle de Venta | 0.5d | 2024-10-30 18:12 | 2024-10-31 12:12 | 29 | 1.5d |
| 31 | 1.1.12 | **Rol** | 0.3d | 2024-10-31 12:12 | 2024-10-31 16:36 |  | 1.5d |
| 32 |  | CRUD | 0.3d | 2024-10-31 12:12 | 2024-10-31 16:36 | 30 | 1.5d |
| 33 | 1.2 | **Controlador** | 6.4d | 2024-10-31 16:36 | 2024-11-11 09:48 |  | 1.5d |
| 34 |  | Usuario | 0.5d | 2024-10-31 16:36 | 2024-11-01 10:36 | 32 | 1.5d |
| 35 |  | Categoria | 0.5d | 2024-11-01 10:36 | 2024-11-01 16:36 | 34 | 1.5d |
| 36 |  | Producto | 0.5d | 2024-11-01 16:36 | 2024-11-04 10:36 | 35 | 1.5d |
| 37 |  | Moneda | 0.5d | 2024-11-04 10:36 | 2024-11-04 16:36 | 36 | 1.5d |
| 38 |  | Cliente | 0.2d | 2024-11-04 16:36 | 2024-11-04 18:12 | 37 | 1.5d |
| 39 |  | Proveedor | 0.5d | 2024-11-04 18:12 | 2024-11-05 12:12 | 38 | 1.5d |
| 40 |  | Usuario | 0.5d | 2024-11-05 12:12 | 2024-11-05 18:12 | 39 | 1.5d |
| 41 |  | Empresa | 0.5d | 2024-11-05 18:12 | 2024-11-06 12:12 | 40 | 1.5d |
| 42 |  | Sucursal | 0.2d | 2024-11-06 12:12 | 2024-11-06 15:48 | 41 | 1.5d |
| 43 |  | Compra | 1d | 2024-11-06 15:48 | 2024-11-07 15:48 | 42 | 1.5d |
| 44 |  | Venta | 1d | 2024-11-07 15:48 | 2024-11-08 15:48 | 43 | 1.5d |
| 45 |  | Rol | 0.5d | 2024-11-08 15:48 | 2024-11-11 09:48 | 44 | 1.5d |
| 46 | 1.3 | **Vistas** | 19.5d | 2024-11-11 09:48 | 2024-12-06 15:48 |  | 1.5d |
| 47 |  | Vetana de Acceso | 0.5d | 2024-11-11 09:48 | 2024-11-11 15:48 | 45 | 1.5d |
| 48 |  | Ventana Home | 0.5d | 2024-11-11 15:48 | 2024-11-12 09:48 | 47 | 1.5d |
| 49 |  | Mant. Categoria | 0.5d | 2024-11-12 09:48 | 2024-11-12 15:48 | 48 | 1.5d |
| 50 |  | Mant. Producto | 1d | 2024-11-12 15:48 | 2024-11-13 15:48 | 49 | 1.5d |
| 51 |  | Mant. Moneda | 0.5d | 2024-11-13 15:48 | 2024-11-14 09:48 | 50 | 1.5d |
| 52 |  | Mant. Unidad de Medida | 0.5d | 2024-11-14 09:48 | 2024-11-14 15:48 | 51 | 1.5d |
| 53 |  | Mant. Cliente | 1d | 2024-11-14 15:48 | 2024-11-15 15:48 | 52 | 1.5d |
| 54 |  | Mant. Proveedor | 1d | 2024-11-15 15:48 | 2024-11-18 15:48 | 53 | 1.5d |
| 55 |  | Mant. Usuario | 1.5d | 2024-11-18 15:48 | 2024-11-20 09:48 | 54 | 1.5d |
| 56 |  | Mant. Empresa | 0.5d | 2024-11-20 09:48 | 2024-11-20 15:48 | 55 | 1.5d |
| 57 |  | Proceso de Compra | 3d | 2024-11-20 15:48 | 2024-11-25 15:48 | 56 | 1.5d |
| 58 |  | Vista de Compra | 1d | 2024-11-25 15:48 | 2024-11-26 15:48 | 57 | 1.5d |
| 59 |  | Proceso de Venta | 3d | 2024-11-26 15:48 | 2024-11-29 15:48 | 58 | 1.5d |
| 60 |  | Vista de Venta | 1d | 2024-11-29 15:48 | 2024-12-02 15:48 | 59 | 1.5d |
| 61 |  | Listado de Venta | 1.5d | 2024-12-02 15:48 | 2024-12-04 09:48 | 60 | 1.5d |
| 62 |  | Listado de Compra | 1.5d | 2024-12-04 09:48 | 2024-12-05 15:48 | 61 | 1.5d |
| 63 |  | Mant. Sucursal | 0.5d | 2024-12-05 15:48 | 2024-12-06 09:48 | 62 | 1.5d |
| 64 |  | Mant. Rol | 0.5d | 2024-12-06 09:48 | 2024-12-06 15:48 | 63 | 1.5d |
| 65 |  | Pruebas | 4d | 2024-12-06 15:48 | 2024-12-12 15:48 | 64 | 1.5d |
| 66 |  | Cambios o Correcciones | 2d | 2024-12-12 15:48 | 2024-12-16 15:48 | 65 | 1.5d |

## Version 2 (saved 2024-10-24)

Note of the change: 24/10/2024 Conexion

Last finish stays 2024-12-18.

Changed:

| ID | Task | Start | Complete | Total float |
| --- | --- | --- | --- | --- |
| 1 | **Sistema de Compra y Venta** | 2024-10-23 09:00 A | 0% → 6% |  |
| 2 | **Modelo** | 2024-10-23 09:00 A | 0% → 35% |  |
| 3 | **Usuario** | 2024-10-23 09:00 A | 0% → 50% | 1.5d → 0.25d |
| 4 | Login | 2024-10-23 09:00 A | 0% → 50% | 1.5d → 0.15d |
| 5 | Cambio de contraseña | 2024-10-23 10:36 A | 0% → 50% | 1.5d → 0.25d |
| 6 | CRUD | 2024-10-23 15:00 A | 0% → 50% | 1.5d → 0.25d |
| 7 | **Categoria** | 2024-10-24 09:00 A | 0% → 50% | 1.5d → 0.25d |
| 8 | CRUD | 2024-10-24 09:00 A | 0% → 50% | 1.5d → 0.25d |
| 9 | **Producto** | 2024-10-24 15:00 A | 0% → 50% | 1.5d → 0.25d |
| 10 | CRUD | 2024-10-24 15:00 A | 0% → 50% | 1.5d → 0.25d |
| 11 | **Moneda** | 2024-10-25 09:00 A | 0% → 50% | 1.5d → 0.25d |
| 12 | CRUD | 2024-10-25 09:00 A | 0% → 50% | 1.5d → 0.25d |
| 13 | **Unidad de medida** | 2024-10-25 15:00 A | 0% → 50% | 1.5d → 0.25d |
| 14 | CRUD | 2024-10-25 15:00 A | 0% → 50% | 1.5d → 0.25d |
| 15 | **Cliente** | 2024-10-28 09:00 A | 0% → 50% | 1.5d → 0.25d |
| 16 | CRUD | 2024-10-28 09:00 A | 0% → 50% | 1.5d → 0.25d |
| 17 | **Proveedor** | 2024-10-28 15:00 A | 0% → 50% | 1.5d → 0.1d |
| 18 | CRUD | 2024-10-28 15:00 A | 0% → 50% | 1.5d → 0.1d |
| 19 | **Empresa** | 2024-10-29 09:00 A | 0% → 50% | 1.5d → 0.1d |
| 20 | CRUD | 2024-10-29 09:00 A | 0% → 50% | 1.5d → 0.1d |
| 21 | **Sucursal** | 2024-10-29 10:36 A | 0% → 50% | 1.5d → 0.15d |
| 22 | CRUD | 2024-10-29 10:36 A | 0% → 50% | 1.5d → 0.15d |
| 31 | **Rol** | 2024-10-31 12:12 A | 0% → 50% |  |
| 32 | CRUD | 2024-10-31 12:12 A | 0% → 50% |  |

## Version 3 (saved 2024-10-24)

Note of the change: 22/10/2024 Controller Mantenedor

Last finish stays 2024-12-18.

Changed:

| ID | Task | Complete | Total float |
| --- | --- | --- | --- |
| 1 | **Sistema de Compra y Venta** | 6% → 9% |  |
| 2 | **Modelo** | 35% → 54% |  |
| 3 | **Usuario** | 50% → 65% | 0.25d → 0.4d |
| 6 | CRUD | 50% → 80% | 0.25d → 0.4d |
| 7 | **Categoria** | 50% → 80% | 0.25d → 0.4d |
| 8 | CRUD | 50% → 80% | 0.25d → 0.4d |
| 9 | **Producto** | 50% → 80% | 0.25d → 0.4d |
| 10 | CRUD | 50% → 80% | 0.25d → 0.4d |
| 11 | **Moneda** | 50% → 80% | 0.25d → 0.4d |
| 12 | CRUD | 50% → 80% | 0.25d → 0.4d |
| 13 | **Unidad de medida** | 50% → 80% | 0.25d → 0.4d |
| 14 | CRUD | 50% → 80% | 0.25d → 0.4d |
| 15 | **Cliente** | 50% → 80% | 0.25d → 0.4d |
| 16 | CRUD | 50% → 80% | 0.25d → 0.4d |
| 17 | **Proveedor** | 50% → 80% | 0.1d → 0.16d |
| 18 | CRUD | 50% → 80% | 0.1d → 0.16d |
| 19 | **Empresa** | 50% → 80% | 0.1d → 0.16d |
| 20 | CRUD | 50% → 80% | 0.1d → 0.16d |
| 21 | **Sucursal** | 50% → 80% | 0.15d → 0.24d |
| 22 | CRUD | 50% → 80% | 0.15d → 0.24d |
| 31 | **Rol** | 50% → 80% |  |
| 32 | CRUD | 50% → 80% |  |

## Version 4 (saved 2024-11-05)

Note of the change: 06/11/2024 Reparando errores y completando vistas con su base de datos

Last finish stays 2024-12-18. Complete tasks 0 → 37.

Changed:

| ID | Task | Start | Finish | Complete | Total float |
| --- | --- | --- | --- | --- | --- |
| 1 | **Sistema de Compra y Venta** |  |  | 9% → 63% |  |
| 2 | **Modelo** |  |  | 54% → 84% | 1.5d → 33.4d |
| 3 | **Usuario** |  | 2024-10-23 19:00 A | 65% → 100% | 0.4d → none |
| 4 | Login |  | 2024-10-23 10:36 A | 50% → 100% | 0.15d → none |
| 5 | Cambio de contraseña |  | 2024-10-23 13:00 A | 50% → 100% | 0.4d → none |
| 6 | CRUD |  | 2024-10-23 19:00 A | 80% → 100% | 0.4d → none |
| 7 | **Categoria** |  | 2024-10-24 13:00 A | 80% → 100% | 0.4d → none |
| 8 | CRUD |  | 2024-10-24 13:00 A | 80% → 100% | 0.4d → none |
| 9 | **Producto** |  | 2024-10-24 19:00 A | 80% → 100% | 0.4d → none |
| 10 | CRUD |  | 2024-10-24 19:00 A | 80% → 100% | 0.4d → none |
| 11 | **Moneda** |  | 2024-10-25 13:00 A | 80% → 100% | 0.4d → none |
| 12 | CRUD |  | 2024-10-25 13:00 A | 80% → 100% | 0.4d → none |
| 13 | **Unidad de medida** |  | 2024-10-25 19:00 A | 80% → 100% | 0.4d → none |
| 14 | CRUD |  | 2024-10-25 19:00 A | 80% → 100% | 0.4d → none |
| 15 | **Cliente** |  | 2024-10-28 13:00 A | 80% → 100% | 0.4d → none |
| 16 | CRUD |  | 2024-10-28 13:00 A | 80% → 100% | 0.4d → none |
| 17 | **Proveedor** |  | 2024-10-28 19:00 A | 80% → 100% | 0.16d → none |
| 18 | CRUD |  | 2024-10-28 19:00 A | 80% → 100% | 0.16d → none |
| 19 | **Empresa** |  | 2024-10-29 10:36 A | 80% → 100% | 0.16d → none |
| 20 | CRUD |  | 2024-10-29 10:36 A | 80% → 100% | 0.16d → none |
| 21 | **Sucursal** |  | 2024-10-29 12:12 A | 80% → 100% | 0.24d → none |
| 22 | CRUD |  | 2024-10-29 12:12 A | 80% → 100% | 0.24d → none |
| 23 | **Compra** | 2024-10-29 12:12 A | 2024-10-30 12:12 A | 0% → 100% | 0.24d → none |
| 24 | CRUD | 2024-10-29 12:12 A | 2024-10-29 15:48 A | 0% → 100% | 0.24d → none |
| 25 | Agregar Producto | 2024-10-29 15:48 A | 2024-10-29 18:12 A | 0% → 100% | 0.24d → none |
| 26 | Listar Detalle de Compra | 2024-10-29 18:12 A | 2024-10-30 12:12 A | 0% → 100% | 0.24d → none |
| 33 | **Controlador** | 2024-10-31 16:36 A |  | 0% → 77% | 1.5d → 27d |
| 34 | Usuario | 2024-10-31 16:36 A | 2024-11-01 10:36 A | 0% → 100% | 1.5d → none |
| 35 | Categoria | 2024-11-01 10:36 A | 2024-11-01 16:36 A | 0% → 100% | 1.5d → none |
| 36 | Producto | 2024-11-01 16:36 A | 2024-11-04 10:36 A | 0% → 100% | 1.5d → none |
| 37 | Moneda | 2024-11-04 10:36 A | 2024-11-04 16:36 A | 0% → 100% | 1.5d → none |
| 38 | Cliente | 2024-11-04 16:36 A | 2024-11-04 18:12 A | 0% → 100% | 1.5d → none |
| 39 | Proveedor | 2024-11-04 18:12 A | 2024-11-05 12:12 A | 0% → 100% | 1.5d → none |
| 40 | Usuario | 2024-11-05 12:12 A | 2024-11-05 18:12 A | 0% → 100% | 1.5d → none |
| 41 | Empresa | 2024-11-05 18:12 A | 2024-11-06 12:12 A | 0% → 100% | 1.5d → none |
| 42 | Sucursal | 2024-11-06 12:12 A | 2024-11-06 15:48 A | 0% → 100% | 1.5d → none |
| 43 | Compra | 2024-11-06 15:48 A | 2024-11-07 15:48 A | 0% → 100% | 1.5d → none |
| 46 | **Vistas** | 2024-11-11 09:48 A |  | 0% → 71% | 1.5d → 7.5d |
| 47 | Vetana de Acceso | 2024-11-11 09:48 A | 2024-11-11 15:48 A | 0% → 100% | 1.5d → none |
| 48 | Ventana Home | 2024-11-11 15:48 A |  | 0% → 70% | 1.5d → 26d |
| 49 | Mant. Categoria | 2024-11-12 09:48 A | 2024-11-12 15:48 A | 0% → 100% | 1.5d → none |
| 50 | Mant. Producto | 2024-11-12 15:48 A |  | 0% → 90% | 1.5d → 24.5d |
| 51 | Mant. Moneda | 2024-11-13 15:48 A | 2024-11-14 09:48 A | 0% → 100% | 1.5d → none |
| 52 | Mant. Unidad de Medida | 2024-11-14 09:48 A | 2024-11-14 15:48 A | 0% → 100% | 1.5d → none |
| 53 | Mant. Cliente | 2024-11-14 15:48 A | 2024-11-15 15:48 A | 0% → 100% | 1.5d → none |
| 54 | Mant. Proveedor | 2024-11-15 15:48 A | 2024-11-18 15:48 A | 0% → 100% | 1.5d → none |
| 55 | Mant. Usuario | 2024-11-18 15:48 A | 2024-11-20 09:48 A | 0% → 100% | 1.5d → none |
| 56 | Mant. Empresa | 2024-11-20 09:48 A | 2024-11-20 15:48 A | 0% → 100% | 1.5d → none |
| 57 | Proceso de Compra | 2024-11-20 15:48 A | 2024-11-25 15:48 A | 0% → 100% | 1.5d → none |
| 58 | Vista de Compra | 2024-11-25 15:48 A | 2024-11-26 15:48 A | 0% → 100% | 1.5d → none |
| 62 | Listado de Compra | 2024-12-04 09:48 A | 2024-12-05 15:48 A | 0% → 100% | 1.5d → none |
| 63 | Mant. Sucursal | 2024-12-05 15:48 A | 2024-12-06 09:48 A | 0% → 100% | 1.5d → none |
| 64 | Mant. Rol | 2024-12-06 09:48 A | 2024-12-06 15:48 A | 0% → 100% | 1.5d → none |
